# POM+ Project

Schedule from MS Project, 2012-01-03 to 2012-07-27, status date 2012-03-31, costs in $, A marks actual dates.
Big Kola Company
4B START FILE

## Calendars

- Standard: Mon-Fri 08:00-12:00, 13:00-17:00; Sat-Sun off. Exceptions (off unless hours are given): 2012-01-16 (MLK Day), 2012-05-28 (Memorial Day), 2012-07-04 (July 4th).

## Resources

| Resource | Rate |
| --- | --- |
| Marketing Staff | 80 |
| R&D | 80 |
| Engineering | 100 |
| Purchasing | 60 |
| Quality Engineers | 80 |
| Designers | 60 |
| Legal Staff | 120 |
| Production | 60 |

## Schedule

| ID | WBS | Task | Duration | Start | Finish | Predecessors | Complete | Remaining | Baseline start | Baseline finish | Baseline duration | Total slack | Free slack | Constraint | Resources | Work | Actual work | Cost | Baseline cost | Actual cost |
| --- | --- | --- | --- | --- | --- | --- | --- | --- | --- | --- | --- | --- | --- | --- | --- | --- | --- | --- | --- | --- |
| 1 | 1 | **POM+ Project** | 146d | 2012-01-03 A | 2012-07-27 |  | 77% | 33.74d | 2012-01-03 | 2012-07-19 | 140d | 0d |  |  |  | 20464h | 13584h | 1,512,960 | 1,692,000 | 1,023,360 |
| 2 | 1.1 | **R & D project development** | 54d | 2012-01-03 A | 2012-03-19 A |  | 100% |  | 2012-01-03 | 2012-03-13 | 50d |  |  |  |  | 2080h | 2080h | 166,400 | 150,400 | 166,400 |
| 3 | 1.1.1 | Need survey | 22d | 2012-01-03 A | 2012-02-02 A |  | 100% |  | 2012-01-03 | 2012-01-31 | 20d |  |  |  | Marketing Staff [500%] | 880h | 880h | 70,400 | 64,000 | 70,400 |
| 4 | 1.1.2 | Set product specs | 18d | 2012-02-03 A | 2012-02-28 A | 3 | 100% |  | 2012-02-01 | 2012-02-21 | 15d |  |  |  | Marketing Staff [200%]; R&D [400%] | 864h | 864h | 69,120 | 57,600 | 69,120 |
| 5 | 1.1.3 | Shelf life reprot | 10d | 2012-02-29 A | 2012-03-13 A | 4 | 100% |  | 2012-02-22 | 2012-03-06 | 10d |  |  |  | R&D [300%] | 240h | 240h | 19,200 | 19,200 | 19,200 |
| 6 | 1.1.4 | Nutrition report | 4d | 2012-03-14 A | 2012-03-19 A | 4 | 100% |  | 2012-03-07 | 2012-03-13 | 5d |  |  |  | R&D [300%] | 96h | 96h | 7,680 | 9,600 | 7,680 |
| 7 | 1.2 | Secure fruit suppliers | 20d | 2012-04-03 A | 2012-04-30 A | 5, 6 | 100% |  | 2012-03-14 | 2012-04-10 | 20d |  |  | start no earlier than 2012-03-31 | Purchasing | 160h | 160h | 9,600 | 9,600 | 9,600 |
| 8 | 1.3 | **Initial Production** | 86d | 2012-02-29 A | 2012-06-28 |  | 76% | 20.72d | 2012-02-22 | 2012-06-27 | 90d | 5d |  |  |  | 11744h | 9424h | 834,880 | 998,400 | 686,080 |
| 9 | 1.3.1 | Equipment rehab | 31d | 2012-02-29 A | 2012-04-11 A | 4 | 100% |  | 2012-02-22 | 2012-04-03 | 30d |  |  |  | Engineering [1000%]; Production [2000%] | 7440h | 7440h | 545,600 | 528,000 | 545,600 |
| 10 | 1.3.2 | Production trials | 14d | 2012-04-17 A | 2012-05-04 A | 7, 9 | 100% |  | 2012-04-11 | 2012-05-01 | 15d |  |  |  | Production [1500%]; Engineering [1000%]; Purchasing | 832h | 832h | 62,720 | 235,200 | 62,720 |
| 11 | 1.3.3 | Quality trials | 18d | 2012-05-07 A | 2012-05-31 A | 10 | 100% |  | 2012-05-02 | 2012-05-30 | 20d |  |  |  | Production [500%]; Quality Engineers [300%] | 1152h | 1152h | 77,760 | 86,400 | 77,760 |
| 12 | 1.3.4 | Quality metrics | 5d | 2012-06-01 | 2012-06-07 | 11 |  |  | 2012-05-31 | 2012-06-06 | 5d | 5d | 0d |  | Quality Engineers [300%]; Production | 160h |  | 12,000 | 12,000 |  |
| 13 | 1.3.5 | Quality training | 15d | 2012-06-08 | 2012-06-28 | 12 |  |  | 2012-06-07 | 2012-06-27 | 15d | 5d |  |  | Quality Engineers [300%]; Production [1500%] | 2160h |  | 136,800 | 136,800 |  |
| 14 | 1.4 | **Distribution** | 60d | 2012-04-04 A | 2012-06-27 |  | 70% | 18d | 2012-03-14 | 2012-06-20 | 70d | 6d |  |  |  | 2304h | 1584h | 178,560 | 207,200 | 120,960 |
| 15 | 1.4.1 | Market testing | 26d | 2012-04-04 A | 2012-05-09 A | 5, 6 | 100% |  | 2012-03-14 | 2012-04-24 | 30d |  |  | start no earlier than 2012-03-31 | Marketing Staff [500%] | 1040h | 1040h | 83,200 | 96,000 | 83,200 |
| 16 | 1.4.2 | Package design | 12d | 2012-05-10 A | 2012-05-25 A | 15 | 100% |  | 2012-05-31 | 2012-06-20 | 15d |  |  |  | Designers [300%]; Marketing Staff | 384h | 384h | 24,960 | 31,200 | 24,960 |
| 17 | 1.4.3 | Select distributors | 22d | 2012-05-28 A | 2012-06-27 | 5, 6 | 18% | 18d | 2012-04-25 | 2012-05-30 | 25d | 6d |  |  | Marketing Staff [500%] | 880h | 160h | 70,400 | 80,000 | 12,800 |
| 18 | 1.5 | **Legal** | 19d | 2012-05-11 A | 2012-06-07 |  | 74% | 5d | 2012-04-25 | 2012-05-22 | 20d | 5d |  |  |  | 456h | 336h | 54,720 | 57,600 | 40,320 |
| 19 | 1.5.1 | Complete FDA certification | 14d | 2012-05-11 A | 2012-05-31 A | 7, 15 | 100% |  | 2012-04-25 | 2012-05-15 | 15d |  |  |  | Legal Staff [300%] | 336h | 336h | 40,320 | 43,200 | 40,320 |
| 20 | 1.5.2 | Register trademark | 5d | 2012-06-01 | 2012-06-07 | 7, 15 |  |  | 2012-05-16 | 2012-05-22 | 5d | 5d |  |  | Legal Staff [300%] | 120h |  | 14,400 | 14,400 |  |
| 21 | 1.6 | Prepare product launch | 15d | 2012-07-09 | 2012-07-27 | 13, 16, 17, 19FS+25d, 20FS+15d |  |  | 2012-06-28 | 2012-07-19 | 15d | 0d |  |  | Quality Engineers [300%]; Purchasing [200%]; Production [1500%]; Marketing Staff [500%]; Engineering [500%]; R&D | 3720h |  | 268,800 | 268,800 |  |
